# SGT

Schedule from MS Project, 2010-12-07 to 2011-04-06, costs in R$, A marks actual dates.
vinit

## Calendars

- Padrão: Mon-Fri 09:00-12:00, 13:00-18:00; Sat-Sun off. Exceptions (off unless hours are given): 2010-12-24 (Feriado), 2010-12-31 (Feriado), 2011-01-25 (Feriado).

## Resources

| Resource | Rate |
| --- | --- |
| GRP | 50 |
| Robson | 43 |
| Fabio | 15 |
| Ramon | 11 |
| Promon |  |
| Roberto | 15 |
| Fernando |  |
| Leandro |  |
| Henrique |  |
| Vinicius |  |
| Robinson |  |
| ANL1 |  |
| ANL2 |  |
| ANL3 |  |
| ANLQ |  |
| ? |  |
| EQP FNQ |  |
| QA |  |
| DBA |  |
| DSN |  |
| Cliente |  |
| Diogo |  |
| Vinit |  |
| FNQ |  |
| Thiago |  |

## Schedule

| ID | WBS | Task | Duration | Start | Finish | Predecessors | Complete | Remaining | Total slack | Free slack | Constraint | Resources | Work | Actual work | Cost |
| --- | --- | --- | --- | --- | --- | --- | --- | --- | --- | --- | --- | --- | --- | --- | --- |
| 1 | 1 | **FNQ - Sistemas de Gestão - FGA** | 84d | 2010-12-07 A | 2011-04-06 |  | 37% | 52.88d | 0d |  |  |  | 720h | 273.6h | 1,320 |
| 2 | 1.1 | **Elaboração** | 13d | 2010-12-07 A | 2010-12-23 |  | 58% | 5.5d | 35d |  |  |  | 208h | 112h | 880 |
| 3 | 1.1.1 | **Especificação do sistema** | 13d | 2010-12-07 A | 2010-12-23 |  | 58% | 5.5d | 35d |  |  |  | 208h | 112h | 880 |
| 4 | 1.1.1.1 | Detalhamento do projeto | 1d | 2010-12-07 A | 2010-12-07 A |  | 100% |  |  |  | start no earlier than 2010-12-07 |  |  |  |  |
| 5 | 1.1.1.2 | Elaboração de Casos de Uso | 9d | 2010-12-08 A | 2010-12-20 A | 4 | 100% |  |  |  |  | QA | 72h | 72h |  |
| 6 | 1.1.1.3 | Aprovação dos Casos de Uso | 1d | 2010-12-21 A | 2010-12-21 A | 5 | 100% |  |  |  |  | EQP FNQ | 8h | 8h |  |
| 7 | 1.1.1.4 | Definição do Modelo de Dados | 1d | 2010-12-22 A | 2010-12-22 A | 6 | 100% |  |  |  |  | ANL1 | 8h | 8h |  |
| 8 | 1.1.1.5 | Definição do DePara e Regras Semânticas com o SIAC WEB | 1d | 2010-12-23 | 2010-12-23 | 7 |  |  | 35d |  | start no earlier than 2010-12-07 | ANL1; EQP FNQ | 16h |  |  |
| 9 | 1.1.1.6 | Definição dos Wireframes | 2d | 2010-12-21 A | 2010-12-22 A | 5 | 100% |  |  |  |  | DSN | 16h | 16h |  |
| 10 | 1.1.1.7 | Definição dos Templates | 1d | 2010-12-23 A | 2010-12-23 A | 9 | 100% |  |  |  |  | DSN | 8h | 8h |  |
| 11 | 1.1.1.8 | Elaboração do Plano de Teste | 10d | 2010-12-07 | 2010-12-20 |  |  |  | 38d |  |  | Ramon | 80h |  | 880 |
| 12 | 1.2 | **Construção** | 63d | 2010-12-27 A | 2011-03-25 |  | 35% | 40.67d | 0d |  |  |  | 424h | 161.6h | 176 |
| 13 | 1.2.1 | **1a. Iteração** | 61d | 2010-12-27 A | 2011-03-23 |  | 37% | 38.6d | 2d |  |  |  | 408h | 161.6h | 176 |
| 14 | 1.2.1.1 | **Identidade Visual** | 1d | 2010-12-27 | 2010-12-27 |  |  |  | 62d |  |  |  | 8h |  |  |
| 15 | 1.2.1.1.1 | Skins | 1d | 2010-12-27 | 2010-12-27 | 10 |  |  | 59.6d | 6d |  | Diogo | 8h |  |  |
| 16 | 1.2.1.2 | **Inscrição e Questionário** | 24d | 2011-01-06 A | 2011-02-09 |  | 79% | 5d | 1.2d |  |  |  | 192h | 152h |  |
| 17 | 1.2.1.2.1 | Manter Turma/Mudar Empresa de Turma | 4d | 2011-01-06 A | 2011-01-11 A | 15 | 100% |  |  |  | start no earlier than 2011-01-05 | Diogo | 32h | 32h |  |
| 18 | 1.2.1.2.2 | Visualizar Empresa de Turma | 1d | 2011-01-12 A | 2011-01-12 A | 17 | 100% |  |  |  |  | Diogo | 8h | 8h |  |
| 19 | 1.2.1.2.3 | Gerenciar Etapa | 2d | 2011-01-13 A | 2011-01-14 A | 18 | 100% |  |  |  |  | Diogo | 16h | 16h |  |
| 20 | 1.2.1.2.4 | Associar Empresa de Turma | 1d | 2011-01-17 A | 2011-01-17 A | 19 | 100% |  |  |  |  | Diogo | 8h | 8h |  |
| 21 | 1.2.1.2.5 | Incluir Pre Cadastro de Empresa Turma | 1d | 2011-01-18 A | 2011-01-18 A | 20 | 100% |  |  |  |  | Diogo | 8h | 8h |  |
| 22 | 1.2.1.2.6 | Visualizar Resumo | 1d | 2011-01-19 A | 2011-01-19 A | 21 | 100% |  |  |  |  | Diogo | 8h | 8h |  |
| 23 | 1.2.1.2.7 | Manter Inscrição FGA | 5d | 2011-01-20 A | 2011-01-27 A | 22 | 100% |  |  |  |  | Thiago | 40h | 40h |  |
| 24 | 1.2.1.2.8 | Manter Inscrição Turma | 3d | 2011-01-28 A | 2011-02-01 A | 23 | 100% |  |  |  |  | Thiago | 24h | 24h |  |
| 25 | 1.2.1.2.9 | Manter Contato FGA | 1d | 2011-02-02 A | 2011-02-02 A | 24 | 100% |  |  |  |  | Thiago | 8h | 8h |  |
| 26 | 1.2.1.2.10 | Preencher o Autodiagnostico inicial | 2d | 2011-02-03 | 2011-02-04 | 25 |  |  | 1.2d | 0d |  | Diogo | 16h |  |  |
| 27 | 1.2.1.2.11 | Preencher o Autodiagnostico final | 2d | 2011-02-07 | 2011-02-08 | 26 |  |  | 1.2d | 0d |  | Diogo | 16h |  |  |
| 28 | 1.2.1.2.12 | Gerar Modelo de Relatórios de Avaliação | 1d | 2011-02-09 | 2011-02-09 | 27 |  |  | 1.2d | 0d |  | Diogo | 8h |  |  |

| ID | WBS | Task | Duration | Start | Finish | Predecessors | Complete | Remaining | Total slack | Free slack | Resources | Work | Actual work | Cost |
| --- | --- | --- | --- | --- | --- | --- | --- | --- | --- | --- | --- | --- | --- | --- |
| 29 | 1.2.1.3 | **Ranking e Avaliação** | 21d | 2011-02-10 | 2011-03-10 |  |  |  | 1.2d |  |  | 168h |  |  |
| 30 | 1.2.1.3.1 | Visualizar Rankig de Candidatas FGA | 1d | 2011-02-10 | 2011-02-10 | 28 |  |  | 1.2d | 0d | Diogo | 8h |  |  |
| 31 | 1.2.1.3.2 | Visualizar Autodiagnostico Inicial | 1d | 2011-02-11 | 2011-02-11 | 30 |  |  | 1.2d | 0d | Diogo | 8h |  |  |
| 32 | 1.2.1.3.3 | Visualizar Rankin Pre Classificadas FGA | 1d | 2011-02-14 | 2011-02-14 | 31 |  |  | 1.2d | 0d | Diogo | 8h |  |  |
| 33 | 1.2.1.3.4 | Visualizar Avaliação Inicial | 1d | 2011-02-15 | 2011-02-15 | 32 |  |  | 1.2d | 0d | Diogo | 8h |  |  |
| 34 | 1.2.1.3.5 | Visualizar Fase 4 | 1d | 2011-02-16 | 2011-02-16 | 33 |  |  | 1.2d | 0d | Diogo | 8h |  |  |
| 35 | 1.2.1.3.6 | Visualizar Avaliação Final | 1d | 2011-02-17 | 2011-02-17 | 34 |  |  | 1.2d | 0d | Diogo | 8h |  |  |
| 36 | 1.2.1.3.7 | Visualizar Auto Diagnostico Final | 1d | 2011-02-18 | 2011-02-18 | 35 |  |  | 1.2d | 0d | Diogo | 8h |  |  |
| 37 | 1.2.1.3.8 | Avaliar Auto Diagnostico | 2d | 2011-02-21 | 2011-02-22 | 36 |  |  | 1.2d | 0d | Diogo | 16h |  |  |
| 38 | 1.2.1.3.9 | Empresas Candidatas | 1d | 2011-02-23 | 2011-02-23 | 37 |  |  | 1.2d | 0d | Diogo | 8h |  |  |
| 39 | 1.2.1.3.10 | Empresas Pré-Classificadas | 2d | 2011-02-24 | 2011-02-25 | 38 |  |  | 1.2d | 0d | Diogo | 16h |  |  |
| 40 | 1.2.1.3.11 | Fase 4 | 3d | 2011-02-28 | 2011-03-02 | 39 |  |  | 1.2d | 0d | Diogo | 24h |  |  |
| 41 | 1.2.1.3.12 | Avaliar - Fase 1 | 3d | 2011-03-03 | 2011-03-07 | 40 |  |  | 1.2d | 0d | Diogo | 24h |  |  |
| 42 | 1.2.1.3.13 | Avaliar - Fase 4 | 3d | 2011-03-08 | 2011-03-10 | 41 |  |  | 1.2d | 0d | Diogo | 24h |  |  |
| 43 | 1.2.1.4 | **Relatório** | 6d | 2011-03-11 A | 2011-03-18 |  | 20% | 4.8d | 0d |  |  | 24h | 9.6h |  |
| 44 | 1.2.1.4.1 | Desempenho Global e respostas dos questionários FGA | 3d | 2011-03-11 | 2011-03-15 | 42 |  |  | 1.2d | 0d |  |  |  |  |
| 45 | 1.2.1.4.2 | Numero de participantes FGA | 3d | 2011-03-16 A | 2011-03-18 | 44 | 40% | 1.8d | 0d |  | Diogo | 24h | 9.6h |  |
| 46 | 1.2.1.5 | **Finalização da 1a Iteração** | 3d | 2011-03-21 | 2011-03-23 |  |  |  | 0d |  |  | 16h |  | 176 |
| 47 | 1.2.1.5.1 | Testes | 2d | 2011-03-21 | 2011-03-22 | 45 |  |  | 0d |  | Ramon | 16h |  | 176 |
| 48 | 1.2.1.5.2 | Aceite | 1d | 2011-03-23 | 2011-03-23 | 47 |  |  | 0d |  |  |  |  |  |
| 49 | 1.2.2 | **Finalização** | 2d | 2011-03-24 | 2011-03-25 |  |  |  | 0d |  |  | 16h |  |  |
| 50 | 1.2.2.1 | Instalação em ambiente de homologação | 1d | 2011-03-24 | 2011-03-24 | 48 |  |  | 0d |  | Vinit | 8h |  |  |
| 51 | 1.2.2.2 | Reunião de Acompanhamento - Status Report | 1d | 2011-03-25 | 2011-03-25 | 50 |  |  | 0d |  | Vinit | 8h |  |  |
| 52 | 1.3 | **Implantação** | 8d | 2011-03-28 | 2011-04-06 | 12 |  |  | 0d |  |  | 88h |  | 264 |
| 53 | 1.3.1 | Homologação pelo Cliente | 3d | 2011-03-28 | 2011-03-30 | 50 |  |  | 0d |  | FNQ | 24h |  |  |
| 54 | 1.3.2 | Aceite | 1d | 2011-03-31 | 2011-03-31 | 53 |  |  | 0d |  | FNQ | 8h |  |  |

| ID | WBS | Task | Duration | Start | Finish | Predecessors | Total slack | Resources | Work | Cost |
| --- | --- | --- | --- | --- | --- | --- | --- | --- | --- | --- |
| 55 | 1.3.3 | **Atividades de Implantação** | 4d | 2011-04-01 | 2011-04-06 |  | 0d |  | 32h |  |
| 56 | 1.3.3.1 | Instalação no Ambiente de Produção | 1d | 2011-04-01 | 2011-04-01 | 54 | 0d | Vinit | 8h |  |
| 57 | 1.3.3.2 | Testes Integrados - Cenários de Teste e Correção de Bugs | 3d | 2011-04-04 | 2011-04-06 | 56 | 0d | Vinit | 24h |  |
| 58 | 1.3.4 | Elaboração e Aplicação do Treinamento | 3d | 2011-04-01 | 2011-04-05 | 54 | 0d | Ramon | 24h | 264 |
| 59 | 1.3.5 | Reunião de Encerrameto | 0.5d | 2011-04-06 | 2011-04-06 | 58 | 0d |  |  |  |
| 60 | 1.3.6 | Go-Live & Suporte | 0.5d | 2011-04-06 | 2011-04-06 | 59 | 0d |  |  |  |
