# SGT

Schedule from MS Project, 2010-12-01 to 2011-02-09, costs in R$, A marks actual dates.
vinit

## Calendars

- Padrão: Mon-Sat 09:00-12:00, 13:00-18:00; Sun off. Exceptions (off unless hours are given): 2010-12-24, 2010-12-31.

## Resources

| Resource | Rate |
| --- | --- |
| GRP | 50 |
| Robson | 43 |
| Fabio | 15 |
| Ramon | 11 |
| Promon |  |
| Roberto | 15 |
| Fernando |  |
| Leandro |  |
| Henrique |  |
| Vinicius |  |
| Robinson |  |
| ANL1 |  |
| ANL2 |  |
| ANL3 |  |
| ANLQ |  |
| ? |  |
| FNQ |  |
| Vinit |  |
| ANdrei |  |
| Thiago |  |

## Schedule

| ID | WBS | Task | Duration | Start | Finish | Predecessors | Complete | Remaining | Total slack | Free slack | Constraint | Resources | Work | Actual work | Cost | Actual cost |
| --- | --- | --- | --- | --- | --- | --- | --- | --- | --- | --- | --- | --- | --- | --- | --- | --- |
| 1 | 1 | **FNQ - Sistemas de Gestão - MPE** | 59d | 2010-12-01 A | 2011-02-09 |  | 29% | 42.18d | 0d |  |  |  | 836h | 288.4h | 2,904 | 1,560 |
| 2 | 1.1 | **Construção** | 47d | 2010-12-01 A | 2011-01-26 |  | 32% | 32.07d | 6d | 0d |  |  | 740h | 288.4h | 2,904 | 1,560 |
| 3 | 1.1.1 | **Ambiente** | 13d | 2010-12-01 A | 2010-12-15 |  | 33% | 8.73d | 34d |  |  |  | 152h | 66h | 360 | 360 |
| 4 | 1.1.1.1 | Montagem do Ambiente | 1.5d | 2010-12-01 A | 2010-12-02 A |  | 100% |  |  |  |  | Fabio; Fernando | 24h | 24h | 180 | 180 |
| 5 | 1.1.1.2 | Definição Arquitetura | 1.5d | 2010-12-02 A | 2010-12-03 A | 4 | 100% |  |  |  |  | Fabio; Fernando | 24h | 24h | 180 | 180 |
| 6 | 1.1.1.3 | Importação de dados | 9d | 2010-12-01 A | 2010-12-10 |  | 25% | 6.75d | 37d | 0d |  | ? | 72h | 18h |  |  |
| 7 | 1.1.1.4 | Elaboração dos Scripts de Teste | 4d | 2010-12-11 | 2010-12-15 | 6 |  |  | 37d |  |  | ANdrei | 32h |  |  |  |
| 8 | 1.1.2 | **1a. Iteração** | 47d | 2010-12-01 A | 2011-01-26 |  | 32% | 31.82d | 6d |  |  |  | 572h | 222.4h | 2,544 | 1,200 |
| 9 | 1.1.2.1 | **Identidade Visual** | 3d | 2010-12-06 A | 2010-12-08 A |  | 100% |  |  |  |  |  | 36h | 36h | 360 | 360 |
| 10 | 1.1.2.1.1 | Skins | 1.5d | 2010-12-06 A | 2010-12-08 A | 5 | 100% |  |  |  |  | Fernando; Fabio | 12h | 12h | 180 | 180 |
| 11 | 1.1.2.1.2 | Identidade Básica | 1.5d | 2010-12-07 A | 2010-12-08 A | 10 | 100% |  |  |  |  | Fabio; Fernando | 24h | 24h | 180 | 180 |
| 12 | 1.1.2.2 | **Segurança** | 12d | 2010-12-09 A | 2010-12-22 A |  | 100% |  |  |  |  |  | 64h | 64h |  |  |
| 13 | 1.1.2.2.1 | Manter Usuário | 1d | 2010-12-09 A | 2010-12-09 A | 11 | 100% |  |  |  |  | Fernando | 8h | 8h |  |  |
| 14 | 1.1.2.2.2 | Autenticar Sistema | 2d | 2010-12-13 A | 2010-12-14 A | 13 | 100% |  |  |  |  | Fernando | 16h | 16h |  |  |
| 15 | 1.1.2.2.3 | Alterar Senha | 1d | 2010-12-15 A | 2010-12-15 A | 14 | 100% |  |  |  |  | Fernando | 8h | 8h |  |  |
| 16 | 1.1.2.2.4 | Manter Associação Usuário x Grupo de Acesso | 3d | 2010-12-17 A | 2010-12-21 A | 15 | 100% |  |  |  |  | Fernando | 24h | 24h |  |  |
| 17 | 1.1.2.2.5 | Solicitar Senha | 1d | 2010-12-22 A | 2010-12-22 A | 16 | 100% |  |  |  |  | Fernando | 8h | 8h |  |  |
| 18 | 1.1.2.3 | **Administrativo** | 12d | 2010-12-09 A | 2010-12-22 |  | 83% | 2d | 28d |  |  |  | 48h | 40h | 720 | 600 |
| 19 | 1.1.2.3.1 | Escritorio Regional | 1d | 2010-12-09 A | 2010-12-09 A | 11 | 100% |  |  |  |  | Fabio | 8h | 8h | 120 | 120 |
| 20 | 1.1.2.3.2 | Gerenciar Etapas MPE | 2d | 2010-12-16 A | 2010-12-17 A | 19 | 100% |  |  |  |  | Fabio | 16h | 16h | 240 | 240 |
| 21 | 1.1.2.3.3 | Manter Grupo de Empresa | 1d | 2010-12-20 A | 2010-12-20 A | 20 | 100% |  |  |  |  | Fabio | 8h | 8h | 120 | 120 |
| 22 | 1.1.2.3.4 | Geração de Logs | 1d | 2010-12-21 | 2010-12-21 | 21 |  |  | 28d |  |  | Fabio | 8h |  | 120 |  |
| 23 | 1.1.2.3.5 | Visualizar Resumo | 1d | 2010-12-22 A | 2010-12-22 A | 22 | 100% |  |  |  |  | Fabio | 8h | 8h | 120 | 120 |
| 24 | 1.1.2.4 | **Inscrição e Questionário** | 18d | 2010-12-23 A | 2011-01-14 |  | 75% | 4.42d | 2d |  |  |  | 88h | 66.4h | 240 | 240 |
| 25 | 1.1.2.4.1 | Manter Inscrição Administrador | 1d | 2010-12-23 A | 2010-12-23 A | 23 | 100% |  |  |  |  | Fabio | 8h | 8h | 120 | 120 |
| 26 | 1.1.2.4.2 | Manter Inscrição Empresa | 3d | 2010-12-27 A | 2010-12-29 A | 25 | 100% |  |  |  |  | Fernando | 24h | 24h |  |  |
| 27 | 1.1.2.4.3 | Responder Questionário | 3d | 2011-01-07 A | 2011-01-11 A |  | 100% |  |  |  | start no earlier than 2011-01-07 | Thiago | 24h | 24h |  |  |
| 28 | 1.1.2.4.4 | Enviar Questionário | 3d | 2011-01-12 A | 2011-01-14 | 27 | 10% | 2.7d | 7d | 0d |  | Thiago | 24h | 2.4h |  |  |
| 29 | 1.1.2.4.5 | Relatorio Inscritas | 1d | 2010-12-23 A | 2010-12-27 A | 25 | 100% |  |  |  |  | Fabio | 8h | 8h | 120 | 120 |

| ID | WBS | Task | Duration | Start | Finish | Predecessors | Complete | Remaining | Total slack | Free slack | Constraint | Resources | Work | Actual work | Cost |
| --- | --- | --- | --- | --- | --- | --- | --- | --- | --- | --- | --- | --- | --- | --- | --- |
| 30 | 1.1.2.5 | **Pontuação e RAA** | 5d | 2011-01-05 A | 2011-01-10 |  | 40% | 3d | 14d |  |  |  | 16h | 16h |  |
| 31 | 1.1.2.5.1 | Gerar RAA | 2d | 2011-01-05 A | 2011-01-06 A |  | 100% |  |  |  | start no earlier than 2011-01-05 | Robinson | 16h | 16h |  |
| 32 | 1.1.2.5.2 | Visualizar Histórico Pontuação | 1d | 2011-01-07 | 2011-01-07 | 31 |  |  | 8d | 0d |  |  |  |  |  |
| 33 | 1.1.2.5.3 | Enviar Relatório por E-mail | 2d | 2011-01-08 | 2011-01-10 | 32 |  |  | 17d |  |  |  |  |  |  |
| 34 | 1.1.2.6 | **Ranking e Avaliação** | 5d | 2011-01-13 | 2011-01-18 |  |  |  | 0d |  |  |  | 128h |  | 600 |
| 35 | 1.1.2.6.1 | Empresas Candidatas | 4d | 2011-01-13 | 2011-01-17 | 26 |  |  | 8d | 0d | start no earlier than 2011-01-13 | Fernando | 32h |  |  |
| 36 | 1.1.2.6.2 | Empresas Classificadas | 4d | 2011-01-13 | 2011-01-17 | 29 |  |  | 0d |  | start no earlier than 2011-01-13 | Fabio | 32h |  | 480 |
| 37 | 1.1.2.6.3 | Empresas Finalistas | 4d | 2011-01-13 | 2011-01-17 | 32 |  |  | 5d | 0d | start no earlier than 2011-01-13 | Robinson | 32h |  |  |
| 38 | 1.1.2.6.4 | Manter Avaliação de Classificadas | 2d | 2011-01-15 | 2011-01-17 | 28 |  |  | 5d | 0d |  | Thiago | 16h |  |  |
| 39 | 1.1.2.6.5 | Exportar Relatório Ranking | 1d | 2011-01-18 | 2011-01-18 | 36 |  |  | 0d |  |  | Fabio | 8h |  | 120 |
| 40 | 1.1.2.6.6 | Gerar Formulário de Visitas | 1d | 2011-01-18 | 2011-01-18 | 37 |  |  | 5d | 0d |  | Robinson | 8h |  |  |
| 41 | 1.1.2.7 | **Relatório** | 6d | 2011-01-18 | 2011-01-24 |  |  |  | 1d |  |  |  | 160h |  | 360 |
| 42 | 1.1.2.7.1 | Preenchimento de Inscrições | 3d | 2011-01-18 | 2011-01-20 | 35 |  |  | 8d |  |  | Fernando | 24h |  |  |
| 43 | 1.1.2.7.2 | Número de Participantes por Etapa | 3d | 2011-01-18 | 2011-01-20 | 38 |  |  | 5d | 0d |  | Thiago | 24h |  |  |
| 44 | 1.1.2.7.3 | Empresas Inscritas e Candidatas por digitador | 3d | 2011-01-21 | 2011-01-24 | 42 |  |  | 2d |  |  | Fernando | 24h |  |  |
| 45 | 1.1.2.7.4 | Relação de Participantes por Região | 3d | 2011-01-19 | 2011-01-21 | 39 |  |  | 0d |  |  | Fabio | 24h |  | 360 |
| 46 | 1.1.2.7.5 | Desempenho Global e Panorama de Respostas dos Questionários | 5d | 2011-01-19 | 2011-01-24 | 40 |  |  | 5d |  |  | Robinson | 40h |  |  |
| 47 | 1.1.2.7.6 | Imprimir Relatório | 2d | 2011-01-21 | 2011-01-22 | 43 |  |  | 5d | 0d |  | Thiago | 16h |  |  |
| 48 | 1.1.2.7.7 | Exportar Relatório | 1d | 2011-01-24 | 2011-01-24 | 47 |  |  | 5d |  |  | Thiago | 8h |  |  |
| 49 | 1.1.2.8 | **Demais casos de uso** | 35d | 2010-12-01 A | 2011-01-12 |  | 13% | 30.5d | 18d |  |  |  |  |  |  |
| 50 | 1.1.2.8.1 | Manter Arquivos | 2d | 2011-01-11 A | 2011-01-12 |  | 90% | 0.2d | 14d |  |  |  |  |  |  |
| 51 | 1.1.2.8.2 | Manter Atendimento | 2d | 2010-12-01 | 2010-12-02 |  |  |  | 41d |  |  |  |  |  |  |
| 52 | 1.1.2.8.3 | Manter Notícia | 1d | 2010-12-01 | 2010-12-01 |  |  |  | 42d |  |  |  |  |  |  |
| 53 | 1.1.2.8.4 | Imprimir Etiquetas | 1d | 2010-12-01 | 2010-12-01 |  |  |  | 42d |  |  |  |  |  |  |
| 54 | 1.1.2.8.5 | Atualizar Histórico SIACWEB | 5d | 2010-12-01 | 2010-12-06 |  |  |  | 42d |  |  |  |  |  |  |
| 55 | 1.1.2.8.6 | Atualizar Inscrição SIACWEB | 3d | 2010-12-01 | 2010-12-03 |  |  |  | 44d |  |  |  |  |  |  |

| ID | WBS | Task | Duration | Start | Finish | Predecessors | Total slack | Free slack | Resources | Work | Cost |
| --- | --- | --- | --- | --- | --- | --- | --- | --- | --- | --- | --- |
| 56 | 1.1.2.9 | **Finalização da 1a Iteração** | 4d | 2011-01-22 | 2011-01-26 |  | 0d |  |  | 32h | 264 |
| 57 | 1.1.2.9.1 | Testes | 3d | 2011-01-22 | 2011-01-25 | 45 | 0d |  | Ramon | 24h | 264 |
| 58 | 1.1.2.9.2 | Aceite | 1d | 2011-01-26 | 2011-01-26 | 57 | 0d |  | FNQ | 8h |  |
| 59 | 1.1.3 | **Finalização** | 2d | 2010-12-01 | 2010-12-02 |  | 45d |  |  | 16h |  |
| 60 | 1.1.3.1 | Instalação em ambiente de homologação | 1d | 2010-12-01 | 2010-12-01 |  | 41d | 0d | Vinit | 8h |  |
| 61 | 1.1.3.2 | Reunião de Acompanhamento - Status Report | 1d | 2010-12-02 | 2010-12-02 | 60 | 41d |  | Vinit | 8h |  |
| 62 | 1.2 | **Implantação** | 12d | 2011-01-27 | 2011-02-09 | 2 | 0d |  |  | 96h |  |
| 63 | 1.2.1 | **Atividades de Implantação** | 4d | 2011-01-27 | 2011-01-31 |  | 0d |  |  | 32h |  |
| 64 | 1.2.1.1 | Instalação no Ambiente de Produção | 1d | 2011-01-27 | 2011-01-27 |  | 0d |  | Vinit | 8h |  |
| 65 | 1.2.1.2 | Testes Integrados - Cenários de Teste e Correção de Bugs | 3d | 2011-01-28 | 2011-01-31 | 64 | 0d |  | Vinit | 24h |  |
| 66 | 1.2.2 | Homologação pelo Cliente | 3d | 2011-02-01 | 2011-02-03 | 65 | 0d |  | FNQ | 24h |  |
| 67 | 1.2.3 | Aceite | 1d | 2011-02-04 | 2011-02-04 | 66 | 0d |  | FNQ | 8h |  |
| 68 | 1.2.4 | Elaboração e Aplicação do Treinamento | 3d | 2011-02-05 | 2011-02-08 | 67 | 0d |  | Vinit | 24h |  |
| 69 | 1.2.5 | Reunião de Encerrameto | 0.5d | 2011-02-09 | 2011-02-09 | 68 | 0d |  | Vinit | 4h |  |
| 70 | 1.2.6 | Go-Live & Suporte | 0.5d | 2011-02-09 | 2011-02-09 | 69 | 0d |  | Vinit | 4h |  |
