# SGT

Schedule from MS Project, 2010-12-13 to 2011-03-17.
vinit

## Calendars

- Padrão: Mon-Fri 09:00-12:00, 13:00-18:00; Sat-Sun off. Exceptions (off unless hours are given): 2010-12-24 (Feriado), 2010-12-31 (Feriado), 2011-01-25 (Feriado).

## Resources

| Resource | Rate |
| --- | --- |
| GRP | 50 |
| Robson | 43 |
| Fabio | 15 |
| Ramon | 11 |
| Promon |  |
| Roberto | 15 |
| Fernando |  |
| Leandro |  |
| Henrique |  |
| Vinicius |  |
| Robinson |  |
| ANL1 |  |
| ANL2 |  |
| ANL3 |  |
| ANLQ |  |
| ? |  |
| EQP FNQ |  |
| QA |  |
| DBA |  |
| DSN |  |
| Cliente |  |

## Schedule

| ID | WBS | Task | Duration | Start | Finish | Predecessors | Total slack | Free slack | Constraint | Resources | Work |
| --- | --- | --- | --- | --- | --- | --- | --- | --- | --- | --- | --- |
| 1 | 1 | **FNQ - Sistemas de Gestão - PEG** | 66d | 2010-12-13 | 2011-03-17 |  | 0d |  |  |  | 448h |
| 2 | 1.1 | **Elaboração** | 23d | 2010-12-13 | 2011-01-14 |  | 7d |  |  |  | 256h |
| 3 | 1.1.1 | **Especificação do sistema** | 23d | 2010-12-13 | 2011-01-14 |  | 7d |  |  |  | 256h |
| 4 | 1.1.1.1 | Detalhamento do projeto | 1d | 2010-12-13 | 2010-12-13 |  | 7d | 0d | start no earlier than 2010-12-13 | ANL1; QA; DBA | 24h |
| 5 | 1.1.1.2 | Elaboração de Casos de Uso | 12d | 2010-12-14 | 2010-12-30 | 4 | 7d | 0d |  | QA | 96h |
| 6 | 1.1.1.3 | Aprovação dos Casos de Uso | 1d | 2011-01-03 | 2011-01-03 | 5 | 50d | 0d |  | EQP FNQ | 8h |
| 7 | 1.1.1.4 | Definição do Modelo de Dados | 1d | 2011-01-04 | 2011-01-04 | 6 | 50d | 0d |  | ANL1 | 8h |
| 8 | 1.1.1.5 | Definição do DePara e Regras Semânticas com o SIAC WEB | 1d | 2011-01-05 | 2011-01-05 | 7 | 50d |  | start no earlier than 2010-12-07 | ANL1; EQP FNQ | 16h |
| 9 | 1.1.1.6 | Definição dos Wireframes | 2d | 2011-01-03 | 2011-01-04 | 5 | 7d | 0d |  | DSN | 16h |
| 10 | 1.1.1.7 | Definição dos Templates | 1d | 2011-01-05 | 2011-01-05 | 9 | 7d |  |  | DSN | 8h |
| 11 | 1.1.1.8 | Elaboração do Plano de Teste | 10d | 2011-01-03 | 2011-01-14 |  | 43d |  | start no earlier than 2011-01-03 | ANL1 | 80h |
| 12 | 1.2 | **Construção** | 35d | 2011-01-17 | 2011-03-07 |  | 0d |  |  |  | 192h |
| 13 | 1.2.1 | **1a. Iteração** | 33d | 2011-01-17 | 2011-03-03 |  | 0d |  |  |  | 192h |
| 14 | 1.2.1.1 | **Identidade Visual** | 1d | 2011-01-17 | 2011-01-17 |  | 0d |  |  |  | 8h |
| 15 | 1.2.1.1.1 | Skins | 1d | 2011-01-17 | 2011-01-17 | 10 | 0d |  | start no earlier than 2011-01-17 | ANL1 | 8h |
| 16 | 1.2.1.2 | **Inscrição e Questionário** | 7d | 2011-01-18 | 2011-01-27 |  | 0d |  |  |  | 56h |
| 17 | 1.2.1.2.1 | Mudar Empresa de Turma | 2d | 2011-01-18 | 2011-01-19 | 15 | 0d |  |  | ANL1 | 16h |
| 18 | 1.2.1.2.2 | Preencher o Autodiagnostico inicial | 2d | 2011-01-20 | 2011-01-21 | 17 | 0d |  |  | ANL1 | 16h |
| 19 | 1.2.1.2.3 | Preencher o Autodiagnostico final | 2d | 2011-01-24 | 2011-01-26 | 18 | 0d |  |  | ANL1 | 16h |
| 20 | 1.2.1.2.4 | Gerar Modelo de Relatórios de Avaliação | 1d | 2011-01-27 | 2011-01-27 | 19 | 0d |  |  | ANL1 | 8h |
| 21 | 1.2.1.3 | **Ranking e Avaliação** | 20d | 2011-01-28 | 2011-02-24 |  | 0d |  |  |  | 96h |
| 22 | 1.2.1.3.1 | Autodiagnóstico | 1d | 2011-01-28 | 2011-01-28 | 20 | 0d |  |  | ANL1 | 8h |
| 23 | 1.2.1.3.2 | Validação pela análise das respostas | 2d | 2011-01-31 | 2011-02-01 | 22 | 0d |  |  | ANL1 | 16h |
| 24 | 1.2.1.3.3 | Pré-classificação | 3d | 2011-02-02 | 2011-02-04 | 23 | 0d |  |  | ANL1 | 24h |
| 25 | 1.2.1.3.4 | Plano empresarial | 3d | 2011-02-07 | 2011-02-09 | 24 | 0d |  |  | ANL1 | 24h |
| 26 | 1.2.1.3.5 | Gestão do resultado | 3d | 2011-02-10 | 2011-02-14 | 25 | 0d |  |  | ANL1 | 24h |
| 27 | 1.2.1.3.6 | Novo ciclo do plano empresarial | 2d | 2011-02-15 | 2011-02-16 | 26 | 0d |  |  |  |  |
| 28 | 1.2.1.3.7 | Encerramento de turma | 2d | 2011-02-17 | 2011-02-18 | 27 | 0d |  |  |  |  |
| 29 | 1.2.1.3.8 | Avaliação da fase 1 | 2d | 2011-02-21 | 2011-02-22 | 28 | 0d |  |  |  |  |
| 30 | 1.2.1.3.9 | Avaliação da fase 4 | 2d | 2011-02-23 | 2011-02-24 | 29 | 0d |  |  |  |  |

| ID | WBS | Task | Duration | Start | Finish | Predecessors | Total slack | Resources | Work |
| --- | --- | --- | --- | --- | --- | --- | --- | --- | --- |
| 31 | 1.2.1.4 | **Relatório** | 2d | 2011-02-25 | 2011-02-28 |  | 0d |  | 16h |
| 32 | 1.2.1.4.1 | Gerar Relatórios (com base no MPE2011) | 2d | 2011-02-25 | 2011-02-28 | 30 | 0d | ANL1 | 16h |
| 33 | 1.2.1.5 | **Finalização da 1a Iteração** | 3d | 2011-03-01 | 2011-03-03 |  | 0d |  | 16h |
| 34 | 1.2.1.5.1 | Testes | 2d | 2011-03-01 | 2011-03-02 | 32 | 0d | ANLQ | 16h |
| 35 | 1.2.1.5.2 | Aceite | 1d | 2011-03-03 | 2011-03-03 | 34 | 0d |  |  |
| 36 | 1.2.2 | **Finalização** | 2d | 2011-03-04 | 2011-03-07 |  | 0d |  |  |
| 37 | 1.2.2.1 | Instalação em ambiente de homologação | 1d | 2011-03-04 | 2011-03-04 | 35 | 0d |  |  |
| 38 | 1.2.2.2 | Reunião de Acompanhamento - Status Report | 1d | 2011-03-07 | 2011-03-07 | 37 | 0d |  |  |
| 39 | 1.3 | **Implantação** | 8d | 2011-03-08 | 2011-03-17 | 12 | 0d |  |  |
| 40 | 1.3.1 | Homologação pelo Cliente | 3d | 2011-03-08 | 2011-03-10 | 37 | 0d |  |  |
| 41 | 1.3.2 | Aceite | 1d | 2011-03-11 | 2011-03-11 | 40 | 0d |  |  |
| 42 | 1.3.3 | **Atividades de Implantação** | 4d | 2011-03-14 | 2011-03-17 |  | 0d |  |  |
| 43 | 1.3.3.1 | Instalação no Ambiente de Produção | 1d | 2011-03-14 | 2011-03-14 | 41 | 0d |  |  |
| 44 | 1.3.3.2 | Testes Integrados - Cenários de Teste e Correção de Bugs | 3d | 2011-03-15 | 2011-03-17 | 43 | 0d |  |  |
| 45 | 1.3.4 | Elaboração e Aplicação do Treinamento | 3d | 2011-03-14 | 2011-03-16 | 41 | 0d |  |  |
| 46 | 1.3.5 | Reunião de Encerrameto | 0.5d | 2011-03-17 | 2011-03-17 | 45 | 0d |  |  |
| 47 | 1.3.6 | Go-Live & Suporte | 0.5d | 2011-03-17 | 2011-03-17 | 46 | 0d |  |  |
