# SGT

Schedule from MS Project, 2010-12-01 to 2011-02-25.
vinit

## Calendars

- Padrão: Mon-Fri 09:00-12:00, 13:00-18:00; Sat-Sun off. Exceptions (off unless hours are given): 2010-12-24 (Feriado), 2010-12-31 (Feriado), 2011-01-25 (Feriado).

## Resources

| Resource | Rate |
| --- | --- |
| GRP | 50 |
| Robson | 43 |
| Fabio | 15 |
| Ramon | 11 |
| Promon |  |
| Roberto | 15 |
| Fernando |  |
| Leandro |  |
| Henrique |  |
| Vinicius |  |
| Robinson |  |
| ANL1 |  |
| ANL2 |  |
| ANL3 |  |
| ANLQ |  |
| ? |  |

## Schedule

| ID | WBS | Task | Duration | Start | Finish | Predecessors | Total slack | Free slack | Resources | Work |
| --- | --- | --- | --- | --- | --- | --- | --- | --- | --- | --- |
| 1 | 1 | **FNQ - Ssistemas de Gestão** | 60d? | 2010-12-01 | 2011-02-25 |  | 0d |  |  | 808h |
| 2 | 1.1 | **Construção** | 48d | 2010-12-01 | 2011-02-09 |  | 0d |  |  | 808h |
| 3 | 1.1.1 | **Ambiente** | 9d | 2010-12-01 | 2010-12-13 |  | 0d |  |  | 152h |
| 4 | 1.1.1.1 | Montagem do Ambiente | 1.5d | 2010-12-01 | 2010-12-02 |  | 0d |  | ANL2; ANL1 | 24h |
| 5 | 1.1.1.2 | Definição Arquitetura | 1.5d | 2010-12-02 | 2010-12-03 | 4 | 0d |  | ANL2; ANL1 | 24h |
| 6 | 1.1.1.3 | Importação de dados | 9d | 2010-12-01 | 2010-12-13 |  | 39d |  | ? | 72h |
| 7 | 1.1.1.4 | Elaboração dos Scripts de Teste | 4d | 2010-12-01 | 2010-12-06 |  | 44d |  | ANLQ | 32h |
| 8 | 1.1.2 | **1a. Iteração** | 45d | 2010-12-06 | 2011-02-09 |  | 0d |  |  | 656h |
| 9 | 1.1.2.1 | **Identidade Visual** | 3d | 2010-12-06 | 2010-12-08 |  | 0d |  |  | 48h |
| 10 | 1.1.2.1.1 | Skins | 1.5d | 2010-12-06 | 2010-12-07 | 5 | 0d |  | ANL1; ANL2 | 24h |
| 11 | 1.1.2.1.2 | Identidade Básica | 1.5d | 2010-12-07 | 2010-12-08 | 10 | 0d |  | ANL1; ANL2 | 24h |
| 12 | 1.1.2.2 | **Segurança** | 7d | 2010-12-09 | 2010-12-17 |  | 7d |  |  | 56h |
| 13 | 1.1.2.2.1 | Alterar Senha | 1d | 2010-12-09 | 2010-12-09 | 11 | 7d | 0d | ANL1 | 8h |
| 14 | 1.1.2.2.2 | Autenticar Sistema | 2d | 2010-12-10 | 2010-12-13 | 13 | 7d | 0d | ANL1 | 16h |
| 15 | 1.1.2.2.3 | Manter Grupo de Acesso | 2d | 2010-12-14 | 2010-12-15 | 14 | 7d | 0d | ANL1 | 16h |
| 16 | 1.1.2.2.4 | Manter Usuário | 1d | 2010-12-16 | 2010-12-16 | 15 | 7d | 0d | ANL1 | 8h |
| 17 | 1.1.2.2.5 | Solicitar Senha | 1d | 2010-12-17 | 2010-12-17 | 16 | 7d | 0d | ANL1 | 8h |
| 18 | 1.1.2.3 | **Administrativo** | 15d | 2010-12-09 | 2010-12-30 |  | 0d |  |  | 136h |
| 19 | 1.1.2.3.1 | Gerenciar Etapa | 2d | 2010-12-20 | 2010-12-21 | 17 | 7d | 0d | ANL1 | 16h |
| 20 | 1.1.2.3.2 | Manter Arquivos | 2d | 2010-12-22 | 2010-12-23 | 19 | 7d | 0d | ANL1 | 16h |
| 21 | 1.1.2.3.3 | Manter Associação Usuário x Grupo de Acesso | 1d | 2010-12-27 | 2010-12-27 | 20 | 7d | 0d | ANL1 | 8h |
| 22 | 1.1.2.3.4 | Manter Atendimento | 2d | 2010-12-28 | 2010-12-29 | 21 | 7d | 0d | ANL1 | 16h |
| 23 | 1.1.2.3.5 | Manter Escritório Regional | 1d | 2010-12-30 | 2010-12-30 | 22 | 7d | 0d | ANL1 | 8h |
| 24 | 1.1.2.3.6 | Manter Grupo de Empresa | 1d | 2010-12-09 | 2010-12-09 | 11 | 0d |  | ANL2 | 8h |
| 25 | 1.1.2.3.7 | Manter Notícia | 1d | 2010-12-10 | 2010-12-10 | 24 | 0d |  | ANL2 | 8h |
| 26 | 1.1.2.3.8 | Manter Turma | 2d | 2010-12-13 | 2010-12-14 | 25 | 0d |  | ANL2 | 16h |
| 27 | 1.1.2.3.9 | Visualizar Resumo | 1d | 2010-12-15 | 2010-12-15 | 26 | 0d |  | ANL2 | 8h |
| 28 | 1.1.2.3.10 | Gerenciar Etapas MPE | 2d | 2010-12-16 | 2010-12-17 | 27 | 0d |  | ANL2 | 16h |
| 29 | 1.1.2.3.11 | Iniciar Turma | 1d | 2010-12-20 | 2010-12-20 | 28 | 0d |  | ANL2 | 8h |
| 30 | 1.1.2.3.12 | Geração de Logs | 1d | 2010-12-21 | 2010-12-21 | 29 | 0d |  | ANL2 | 8h |

| ID | WBS | Task | Type | Duration | Start | Finish | Predecessors | Total slack | Free slack | Resources | Work |
| --- | --- | --- | --- | --- | --- | --- | --- | --- | --- | --- | --- |
| 31 | 1.1.2.4 | **Inscrição e Questionário** |  | 14d | 2010-12-22 | 2011-01-12 |  | 0d |  |  | 112h |
| 32 | 1.1.2.4.1 | Atualizar Histórico SIACWEB |  | 2d | 2011-01-03 | 2011-01-04 | 23 | 7d | 0d | ANL1 | 16h |
| 33 | 1.1.2.4.2 | Atualizar Inscrição SIACWEB |  | 2d | 2011-01-05 | 2011-01-06 | 32 | 7d | 0d | ANL1 | 16h |
| 34 | 1.1.2.4.3 | Enviar Questionário |  | 3d | 2011-01-07 | 2011-01-11 | 33 | 7d | 0d | ANL1 | 24h |
| 35 | 1.1.2.4.4 | Relatorio Inscritas |  | 1d | 2011-01-12 | 2011-01-12 | 34 | 7d | 0d | ANL1 | 8h |
| 36 | 1.1.2.4.5 | Gerar Protocolo | milestone | 0d | 2011-01-12 | 2011-01-12 | 35 | 7d | 0d | ANL1 |  |
| 37 | 1.1.2.4.6 | Manter Contato | milestone | 0d | 2011-01-12 | 2011-01-12 | 36 | 7d | 0d | ANL1 |  |
| 38 | 1.1.2.4.7 | Manter Inscrição Administrador |  | 1d | 2010-12-22 | 2010-12-22 | 30 | 0d |  | ANL2 | 8h |
| 39 | 1.1.2.4.8 | Manter Inscrição Empresa |  | 1d | 2010-12-23 | 2010-12-23 | 38 | 0d |  | ANL2 | 8h |
| 40 | 1.1.2.4.9 | Responder Questionário |  | 3d | 2010-12-27 | 2010-12-29 | 39 | 0d |  | ANL2 | 24h |
| 41 | 1.1.2.4.10 | Imprimir Etiquetas |  | 1d | 2010-12-30 | 2010-12-30 | 40 | 0d |  | ANL2 | 8h |
| 42 | 1.1.2.5 | **Pontuação e RAA** |  | 4d | 2011-01-13 | 2011-01-18 |  | 7d |  |  | 32h |
| 43 | 1.1.2.5.1 | Gerar RAA |  | 2d | 2011-01-13 | 2011-01-14 | 37 | 7d | 0d | ANL1 | 16h |
| 44 | 1.1.2.5.2 | Visualizar Histórico Pontuação |  | 2d | 2011-01-17 | 2011-01-18 | 43 | 7d | 0d | ANL1 | 16h |
| 45 | 1.1.2.6 | **Ranking e Avaliação** |  | 14d | 2011-01-03 | 2011-01-20 |  | 0d |  |  | 104h |
| 46 | 1.1.2.6.1 | Empresas Candidatas |  | 3d | 2011-01-03 | 2011-01-05 | 41 | 0d |  | ANL2 | 24h |
| 47 | 1.1.2.6.2 | Empresas Classificadas |  | 3d | 2011-01-06 | 2011-01-10 | 46 | 0d |  | ANL2 | 24h |
| 48 | 1.1.2.6.3 | Candidata Estadual | milestone | 0d | 2011-01-10 | 2011-01-10 | 47 | 0d |  | ANL2 |  |
| 49 | 1.1.2.6.4 | Candidata Nacional | milestone | 0d | 2011-01-10 | 2011-01-10 | 48 | 0d |  | ANL2 |  |
| 50 | 1.1.2.6.5 | Classificada Estadual | milestone | 0d | 2011-01-10 | 2011-01-10 | 49 | 0d |  | ANL2 |  |
| 51 | 1.1.2.6.6 | Classificada Nacional |  | 1d | 2011-01-11 | 2011-01-11 | 50 | 0d |  | ANL2 | 8h |
| 52 | 1.1.2.6.7 | Empresas Finalistas |  | 1d | 2011-01-19 | 2011-01-19 | 44 | 7d | 0d | ANL1 | 8h |
| 53 | 1.1.2.6.8 | Exportar Relatório Ranking |  | 1d | 2011-01-20 | 2011-01-20 | 52 | 7d | 0d | ANL1 | 8h |
| 54 | 1.1.2.6.9 | Finalista Estadual | milestone | 0d | 2011-01-20 | 2011-01-20 | 53 | 7d | 0d | ANL1 |  |
| 55 | 1.1.2.6.10 | Finalista Nacional | milestone | 0d | 2011-01-20 | 2011-01-20 | 54 | 7d | 0d | ANL1 |  |
| 56 | 1.1.2.6.11 | Manter Avaliação de Classificadas |  | 2d | 2011-01-12 | 2011-01-13 | 51 | 0d |  | ANL2 | 16h |
| 57 | 1.1.2.6.12 | Visualizar Ranking |  | 1d | 2011-01-14 | 2011-01-14 | 56 | 0d |  | ANL2 | 8h |
| 58 | 1.1.2.6.13 | Gerar Formulário de Visitas |  | 1d | 2011-01-17 | 2011-01-17 | 57 | 0d |  | ANL2 | 8h |

| ID | WBS | Task | Type | Duration | Start | Finish | Predecessors | Total slack | Free slack | Resources | Work |
| --- | --- | --- | --- | --- | --- | --- | --- | --- | --- | --- | --- |
| 59 | 1.1.2.7 | **Relatório** |  | 12d | 2011-01-18 | 2011-02-03 |  | 0d |  |  | 144h |
| 60 | 1.1.2.7.1 | Gerar Relatório | milestone | 0d | 2011-01-20 | 2011-01-20 | 55 | 7d | 0d | ANL1 |  |
| 61 | 1.1.2.7.2 | Enviar Relatório por E-mail |  | 2d | 2011-01-21 | 2011-01-24 | 60 | 7d | 0d | ANL1 | 16h |
| 62 | 1.1.2.7.3 | Desempenho Global |  | 2d | 2011-01-26 | 2011-01-27 | 61 | 7d | 0d | ANL1 | 16h |
| 63 | 1.1.2.7.4 | Preenchimento de Inscrições |  | 2d | 2011-01-28 | 2011-01-31 | 62 | 7d |  | ANL1 | 16h |
| 64 | 1.1.2.7.5 | Gerar Gráfico |  | 2d | 2011-01-18 | 2011-01-19 | 58 | 0d |  | ANL2 | 16h |
| 65 | 1.1.2.7.6 | Imprimir Relatório |  | 2d | 2011-01-20 | 2011-01-21 | 64 | 0d |  | ANL2 | 16h |
| 66 | 1.1.2.7.7 | Número de Participantes por Etapa |  | 2d | 2011-01-24 | 2011-01-26 | 65 | 0d |  | ANL2 | 16h |
| 67 | 1.1.2.7.8 | Panorama das respostas dos Questionários |  | 2d | 2011-01-27 | 2011-01-28 | 66 | 0d |  | ANL2 | 16h |
| 68 | 1.1.2.7.9 | Empresas Inscritas e Candidatas por digitador |  | 2d | 2011-01-31 | 2011-02-01 | 67 | 0d |  | ANL2 | 16h |
| 69 | 1.1.2.7.10 | Exportar Relatório | milestone | 0d | 2011-02-01 | 2011-02-01 | 68 | 0d |  | ANL2 |  |
| 70 | 1.1.2.7.11 | Gerar Relatório | milestone | 0d | 2011-02-01 | 2011-02-01 | 69 | 0d |  | ANL2 |  |
| 71 | 1.1.2.7.12 | Relação de Participantes por Região |  | 2d | 2011-02-02 | 2011-02-03 | 70 | 0d |  | ANL2 | 16h |
| 72 | 1.1.2.8 | **Finalização da 1a Iteração** |  | 4d | 2011-02-04 | 2011-02-09 |  | 0d |  |  | 24h |
| 73 | 1.1.2.8.1 | Testes |  | 3d | 2011-02-04 | 2011-02-08 | 71 | 0d |  | ANLQ | 24h |
| 74 | 1.1.2.8.2 | Aceite |  | 1d | 2011-02-09 | 2011-02-09 | 73 | 0d |  |  |  |
| 75 | 1.1.3 | **Finalização** |  | 2d | 2010-12-01 | 2010-12-02 |  | 46d |  |  |  |
| 76 | 1.1.3.1 | Instalação em ambiente de homologação |  | 1d | 2010-12-01 | 2010-12-01 |  | 46d | 0d |  |  |
| 77 | 1.1.3.2 | Reunião de Acompanhamento - Status Report |  | 1d | 2010-12-02 | 2010-12-02 | 76 | 46d |  |  |  |
| 78 | 1.2 | **Implantação** |  | 12d? | 2011-02-10 | 2011-02-25 | 2 | 0d |  |  |  |
| 79 | 1.2.1 | **Atividades de Implantação** |  | 4d | 2011-02-10 | 2011-02-15 |  | 0d |  |  |  |
| 80 | 1.2.1.1 | Instalação no Ambiente de Produção |  | 1d | 2011-02-10 | 2011-02-10 |  | 0d |  |  |  |
| 81 | 1.2.1.2 | Testes Integrados - Cenários de Teste e Correção de Bugs |  | 3d | 2011-02-11 | 2011-02-15 | 80 | 0d |  |  |  |
| 82 | 1.2.2 | Homologação pelo Cliente |  | 3d | 2011-02-16 | 2011-02-18 | 81 | 0d |  |  |  |
| 83 | 1.2.3 | Aceite |  | 1d | 2011-02-21 | 2011-02-21 | 82 | 0d |  |  |  |
| 84 | 1.2.4 | Elaboração e Aplicação do Treinamento |  | 3d | 2011-02-22 | 2011-02-24 | 83 | 0d |  |  |  |
| 85 | 1.2.5 | Reunião de Encerrameto |  | 0.5d | 2011-02-25 | 2011-02-25 | 84 | 0d |  |  |  |
| 86 | 1.2.6 | Go-Live & Suporte |  | 0.5d | 2011-02-25 | 2011-02-25 | 85 | 0d |  |  |  |
