# MODELO - Codigo Contrato - Nome Projetos

Schedule from MS Project, 2010-10-19 to 2011-04-04.
vinit

## Calendars

- Padrão: Mon-Fri 09:00-12:00, 13:00-18:00; Sat-Sun off. Exceptions (off unless hours are given): 2010-11-01 to 2010-11-02, 2010-11-15, 2010-12-24, 2010-12-31.

## Resources

| Resource |
| --- |
| GRP |
| ANL1 |
| ANL2 |
| ARQ DSN |
| DSN |
| QA |
| Cliente |
| ANL3 |
| ANL4 |
| ANL5 |
| ANL6 |
| QA, ANL3 |
| DBA |
| GP |
| QA,ANL1 |
| ANL |
| EQP FNQ |
| INFRA FNQ |
| QA, ANL4 |

## Schedule

| ID | WBS | Task | Type | Duration | Start | Finish | Predecessors | Total slack | Free slack | Constraint | Resources | Work |
| --- | --- | --- | --- | --- | --- | --- | --- | --- | --- | --- | --- | --- |
| 1 | 1 | **FNQ - AAP2011** |  | 115d | 2010-10-19 | 2011-04-04 |  | 0d |  |  |  | 3805.33h |
| 2 | 1.1 | **Iniciação** |  | 10d | 2010-10-19 | 2010-11-03 |  | 105d |  |  |  | 112h |
| 3 | 1.1.1 | **Gerenciamento do Projeto** |  | 2d | 2010-10-19 | 2010-10-20 |  | 113d |  |  |  | 16h |
| 4 | 1.1.1.1 | Definição do Plano de Gerenciamento do Projeto |  | 1d | 2010-10-19 | 2010-10-19 |  | 113d | 0d | start no earlier than 2010-10-19 | GRP | 8h |
| 5 | 1.1.1.2 | Elaboração dos principais artefatos de Gerenciamento |  | 1d | 2010-10-20 | 2010-10-20 | 4 | 113d |  |  | GRP | 8h |
| 6 | 1.1.2 | kick-off |  | 1d | 2010-10-28 | 2010-10-28 |  | 107d |  | start no earlier than 2010-10-28 | GRP; Cliente; ANL1 | 24h |
| 7 | 1.1.3 | **Especificação do sistema** |  | 2d | 2010-10-25 | 2010-10-26 |  | 105d |  |  |  | 32h |
| 8 | 1.1.3.1 | Levantamento dos requisitos Funcionais - macro |  | 1d | 2010-10-25 | 2010-10-25 |  | 105d | 0d | start no earlier than 2010-10-25 | ANL1; ANL2 | 16h |
| 9 | 1.1.3.2 | Documentação dos requisitos Funcionais |  | 1d | 2010-10-26 | 2010-10-26 | 8 | 105d | 0d |  | ANL1; ANL2 | 16h |
| 10 | 1.1.4 | **Definição requisitos não funcionais** |  | 3d | 2010-10-27 | 2010-10-29 |  | 105d |  |  |  | 24h |
| 11 | 1.1.4.1 | Levantamento dos requisitos de Arquitetura da Informação |  | 2d | 2010-10-27 | 2010-10-28 | 9 | 105d | 0d |  | ARQ DSN | 16h |
| 12 | 1.1.4.2 | Documentação dos requisitos de Arquitetura da Informação |  | 1d | 2010-10-29 | 2010-10-29 | 11 | 106d |  |  | DSN | 8h |
| 13 | 1.1.5 | Planejamento da Próxima Fase e Iteração |  | 1d | 2010-10-29 | 2010-10-29 | 11 | 105d | 0d |  | GRP | 8h |
| 14 | 1.1.6 | Final da 1ª Iteração - Aceite da Pré-Especificação |  | 1d | 2010-11-03 | 2010-11-03 | 13 | 105d |  |  | Cliente | 8h |
| 15 | 1.2 | **Elaboração** |  | 81d | 2010-10-28 | 2011-02-24 |  | 0d |  |  |  | 1461.33h |
| 16 | 1.2.1 | Preparação de Ambiente |  | 1d | 2010-10-29 | 2010-10-29 | 11 | 106d |  | start no earlier than 2010-10-29 | ANL1 | 8h |
| 17 | 1.2.2 | **Acompanhamento Gerencial** |  | 1d | 2010-10-29 | 2010-10-29 |  | 106d |  |  |  | 8h |
| 18 | 1.2.2.1 | Refinamento dos Artefatos de Gerenciamento |  | 1d | 2010-10-29 | 2010-10-29 | 11 | 106d |  |  | GRP | 8h |
| 19 | 1.2.3 | **Especificação do sistema** |  | 17d | 2010-10-28 | 2010-11-25 |  | 0d |  |  |  | 357.33h |
| 20 | 1.2.3.1 | Definição do DePara e Regras Semânticas com o SIAC WEB |  | 2d | 2010-10-28 | 2010-10-29 |  | 0d |  | start no earlier than 2010-10-28 | ANL1; EQP FNQ | 32h |
| 21 | 1.2.3.2 | Definição do Modelo de Dados |  | 5d | 2010-11-03 | 2010-11-09 | 20 | 0d |  | start no earlier than 2010-11-03 | ANL1; QA; DBA | 93.33h |
| 22 | 1.2.3.3 | Aprovação do Modelo de Dados |  | 1d | 2010-11-10 | 2010-11-10 | 21 | 91d | 0d | start no earlier than 2010-11-09 | EQP FNQ | 8h |
| 23 | 1.2.3.4 | Definição da Arquitetura Proposta |  | 3d | 2010-11-10 | 2010-11-12 | 21 | 0d |  |  | ANL1 | 24h |
| 24 | 1.2.3.5 | Aprovação da Arquitetura Proposta |  | 1d | 2010-11-15 | 2010-11-15 | 23 | 0d |  | start no earlier than 2010-11-12 | EQP FNQ | 8h |
| 25 | 1.2.3.6 | Definição dos Wireframes |  | 2d | 2010-11-05 | 2010-11-08 | 21SS+2d | 95d | 0d |  | DSN | 16h |
| 26 | 1.2.3.7 | Aprovação dos Wireframes |  | 1d | 2010-11-09 | 2010-11-09 | 25 | 101d |  |  | EQP FNQ; Cliente | 16h |
| 27 | 1.2.3.8 | Definição dos Templates |  | 6d | 2010-11-09 | 2010-11-17 | 25 | 95d | 0d |  | DSN | 48h |
| 28 | 1.2.3.9 | Aprovação dos Templates |  | 1d | 2010-11-18 | 2010-11-18 | 27 | 95d |  |  | EQP FNQ; Cliente | 16h |
| 29 | 1.2.3.10 | Elaboração de Casos de Uso |  | 7d | 2010-11-11 | 2010-11-22 | 22 | 91d | 0d |  | QA | 56h |
| 30 | 1.2.3.11 | Aprovação dos Casos de Uso |  | 2d | 2010-11-23 | 2010-11-24 | 29 | 91d | 0d |  | EQP FNQ | 16h |
| 31 | 1.2.3.12 | Apresentação Final para os Envolvidos | milestone | 0d | 2010-11-25 | 2010-11-25 | 30 | 91d | 0d | start no earlier than 2010-11-25 | GRP; EQP FNQ |  |
| 32 | 1.2.3.13 | Elaboração do Plano de Teste |  | 3d | 2010-11-22 | 2010-11-24 | 31FS-3d | 91d |  |  | ANL3 | 24h |

| ID | WBS | Task | Duration | Start | Finish | Predecessors | Total slack | Free slack | Constraint | Resources | Work |
| --- | --- | --- | --- | --- | --- | --- | --- | --- | --- | --- | --- |
| 33 | 1.2.4 | **Validação da arquitetura proposta** | 71d | 2010-11-16 | 2011-02-24 |  | 0d |  |  |  | 952h |
| 34 | 1.2.4.1 | **Início da Iteração** | 71d | 2010-11-16 | 2011-02-24 |  | 0d |  |  |  | 952h |
| 35 | 1.2.4.1.1 | **MPE 2011** | 22d | 2010-11-16 | 2010-12-15 |  | 0d |  |  |  | 320h |
| 36 | 1.2.4.1.1.1 | **Módulo Cadastro** | 18d | 2010-11-16 | 2010-12-09 |  | 57d |  |  |  | 144h |
| 37 | 1.2.4.1.1.1.1 | Elaborar Cadastro de Empresa - Inscrição | 12d | 2010-11-16 | 2010-12-01 | 24 | 57d | 0d |  | ANL2 | 96h |
| 38 | 1.2.4.1.1.1.2 | Elaborar Cadastro de Empresa - Consulta | 5d | 2010-12-02 | 2010-12-08 | 37 | 57d | 0d |  | ANL2 | 40h |
| 39 | 1.2.4.1.1.1.3 | Elaborar Cadastro de Empresa - Exclusão | 1d | 2010-12-09 | 2010-12-09 | 38 | 57d | 0d |  | ANL2 | 8h |
| 40 | 1.2.4.1.1.2 | **Módulo Questionários** | 22d | 2010-11-16 | 2010-12-15 |  | 0d |  |  |  | 176h |
| 41 | 1.2.4.1.1.2.1 | Elaborar Questionário Completo | 15d | 2010-11-16 | 2010-12-06 | 24 | 0d |  |  | ANL1 | 120h |
| 42 | 1.2.4.1.1.2.2 | Elaborar Questionário Digitador | 4d | 2010-12-07 | 2010-12-10 | 41 | 0d |  |  | ANL1 | 32h |
| 43 | 1.2.4.1.1.2.3 | Elaborar Relatório de Autoavaliação RAA | 3d | 2010-12-13 | 2010-12-15 | 42 | 0d |  |  | ANL1 | 24h |
| 44 | 1.2.4.1.2 | **FGA 2011** | 22d | 2010-12-02 | 2011-01-04 |  | 40d |  |  |  | 176h |
| 45 | 1.2.4.1.2.1 | **Módulo Cadastro** | 9d | 2010-12-02 | 2010-12-14 |  | 63d |  |  |  | 64h |
| 46 | 1.2.4.1.2.1.1 | Elaborar Cadastro de Empresa - Inscrição | 3d | 2010-12-02 | 2010-12-06 | 37 | 83d |  |  | ANL5 | 24h |
| 47 | 1.2.4.1.2.1.2 | Elaborar Cadastro de Empresa - Consulta | 2d | 2010-12-09 | 2010-12-10 | 38 | 79d |  |  | ANL5 | 16h |
| 48 | 1.2.4.1.2.1.3 | Elaborar Cadastro de Empresa - Exclusão | 1d | 2010-12-10 | 2010-12-10 | 39 | 57d | 0d |  | ANL5 | 8h |
| 49 | 1.2.4.1.2.1.4 | Elaborar Cadastro de Empresa - Turmas | 2d | 2010-12-13 | 2010-12-14 | 48 | 57d | 0d |  | ANL5 | 16h |
| 50 | 1.2.4.1.2.2 | **Módulo Questionários** | 12d | 2010-12-16 | 2011-01-04 |  | 30d |  |  |  | 112h |
| 51 | 1.2.4.1.2.2.1 | Elaborar Preenchimento do Autodiagnóstico Inicial | 5d | 2010-12-16 | 2010-12-22 | 43 | 30d | 0d |  | ANL6 | 40h |
| 52 | 1.2.4.1.2.2.2 | Elaborar Preenchimento do Autodiagnóstico Final | 5d | 2010-12-23 | 2010-12-29 | 51 | 30d | 0d |  | ANL6 | 40h |
| 53 | 1.2.4.1.2.2.3 | Elaborar Autodiagnósticos | 3d | 2010-12-30 | 2011-01-03 | 52 | 31d | 0d |  | ANL6 | 24h |
| 54 | 1.2.4.1.2.2.4 | Elaborar Relatório de Avaliações | 1d | 2011-01-04 | 2011-01-04 | 53 | 32d | 0d |  | ANL6 | 8h |
| 55 | 1.2.4.1.3 | **PSMN 2011** | 22d | 2010-12-06 | 2011-01-06 |  | 7d |  |  |  | 192h |
| 56 | 1.2.4.1.3.1 | **Módulo Configuração** | 8d | 2010-12-06 | 2010-12-15 |  | 6d |  |  |  | 64h |
| 57 | 1.2.4.1.3.1.1 | Elaborar Configuração de Etapas | 8d | 2010-12-06 | 2010-12-15 |  | 6d | 0d | start no earlier than 2010-12-06 | ANL4 | 64h |

| ID | WBS | Task | Type | Duration | Start | Finish | Predecessors | Total slack | Free slack | Constraint | Resources | Work |
| --- | --- | --- | --- | --- | --- | --- | --- | --- | --- | --- | --- | --- |
| 58 | 1.2.4.1.3.2 | **Módulo Cadastro** |  | 14d | 2010-12-16 | 2011-01-06 |  | 6d |  |  |  | 128h |
| 59 | 1.2.4.1.3.2.1 | Elaborar Cadastro de Empresa - Inscrição |  | 12d | 2010-12-16 | 2010-12-31 | 57 | 6d | 0d |  | ANL4 | 96h |
| 60 | 1.2.4.1.3.2.2 | Elaborar Cadastro de Empresa - Consulta |  | 3d | 2011-01-03 | 2011-01-05 | 59 | 7d | 0d |  | ANL4 | 24h |
| 61 | 1.2.4.1.3.2.3 | Elaborar Cadastro de Empresa - Exclusão |  | 1d | 2011-01-06 | 2011-01-06 | 60 | 7d | 0d |  | ANL4 | 8h |
| 62 | 1.2.4.1.4 | **PEG 2011** |  | 14d | 2011-02-07 | 2011-02-24 |  | 0d |  |  |  | 184h |
| 63 | 1.2.4.1.4.1 | **Módulo Cadastro** |  | 9d | 2011-02-07 | 2011-02-17 |  | 7d |  |  |  | 72h |
| 64 | 1.2.4.1.4.1.1 | Elaborar Cadastro de Empresa - Inscrição |  | 4d | 2011-02-07 | 2011-02-10 | 181FS+10d | 7d | 0d |  | ANL2 | 32h |
| 65 | 1.2.4.1.4.1.2 | Elaborar Cadastro de Empresa - Consulta |  | 2d | 2011-02-11 | 2011-02-14 | 64 | 7d | 0d |  | ANL2 | 16h |
| 66 | 1.2.4.1.4.1.3 | Elaborar Cadastro de Empresa - Exclusão |  | 1d | 2011-02-15 | 2011-02-15 | 65 | 7d | 0d |  | ANL2 | 8h |
| 67 | 1.2.4.1.4.1.4 | Elaborar Cadastro de Empresa - Turmas |  | 2d | 2011-02-16 | 2011-02-17 | 66 | 7d | 0d |  | ANL2 | 16h |
| 68 | 1.2.4.1.4.2 | **Módulo Questionários** |  | 14d | 2011-02-07 | 2011-02-24 |  | 0d |  |  |  | 112h |
| 69 | 1.2.4.1.4.2.1 | Elaborar Preenchimento do Autodiagnóstico Inicial |  | 5d | 2011-02-07 | 2011-02-11 | 171FS+11d | 0d |  |  | ANL3 | 40h |
| 70 | 1.2.4.1.4.2.2 | Elaborar Preenchimento do Autodiagnóstico Final |  | 5d | 2011-02-14 | 2011-02-18 | 69 | 0d |  |  | ANL3 | 40h |
| 71 | 1.2.4.1.4.2.3 | Elaborar Autodiagnósticos |  | 3d | 2011-02-21 | 2011-02-23 | 70 | 0d |  |  | ANL3 | 24h |
| 72 | 1.2.4.1.4.2.4 | Elaborar Relatório de Avaliações |  | 1d | 2011-02-24 | 2011-02-24 | 71 | 0d |  |  | ANL3 | 8h |
| 73 | 1.2.4.1.5 | **SIAC WEB** |  | 10d | 2011-02-07 | 2011-02-18 |  | 23d |  |  |  | 80h |
| 74 | 1.2.4.1.5.1 | Elaborar mecanismo de sincronismo (4 Sistemas) |  | 5d | 2011-02-07 | 2011-02-11 |  | 23d | 0d | start no earlier than 2011-02-07 | ANL1 | 40h |
| 75 | 1.2.4.1.5.2 | Elaborar mecanismo de integração com SIAC Web |  | 5d | 2011-02-14 | 2011-02-18 | 74 | 23d | 0d |  | ANL1 | 40h |
| 76 | 1.2.5 | **Final da iteração** |  | 17d | 2010-12-15 | 2011-01-10 |  | 60d |  |  |  | 136h |
| 77 | 1.2.5.1 | **MPE 2011 e FGA 2011** |  | 6d | 2010-12-15 | 2010-12-22 |  | 61d |  |  |  | 64h |
| 78 | 1.2.5.1.1 | Liberação do ambiente de Homologação | milestone | 0d | 2010-12-15 | 2010-12-15 | 79FS-3d | 77d |  |  | INFRA FNQ |  |
| 79 | 1.2.5.1.2 | Instalação em ambiente de Homologação |  | 2d | 2010-12-16 | 2010-12-17 | 43, 39 | 60d | 0d |  | ANL1 | 16h |
| 80 | 1.2.5.1.3 | Realização de Testes da Iteração e Correção de Bugs |  | 3d | 2010-12-20 | 2010-12-22 | 79 | 60d | 0d |  | QA; ANL2 | 48h |
| 81 | 1.2.5.2 | **PSMN 2011 e PEG 2011** |  | 4d | 2011-01-05 | 2011-01-10 |  | 60d |  |  |  | 56h |
| 82 | 1.2.5.2.1 | Instalação em ambiente de Homologação |  | 1d | 2011-01-05 | 2011-01-05 | 54 | 60d | 0d |  | ANL1 | 8h |
| 83 | 1.2.5.2.2 | Realização de Testes da Iteração e Correção de Bugs |  | 3d | 2011-01-06 | 2011-01-10 | 82 | 60d |  |  | QA; ANL4 | 48h |
| 84 | 1.2.5.3 | Planejamento da Próxima Fase e Iteração |  | 1d | 2010-12-23 | 2010-12-23 | 80 | 60d | 0d |  | GRP | 8h |
| 85 | 1.2.5.4 | Aceite da Fase de Elaboração |  | 1d | 2010-12-27 | 2010-12-27 | 84 | 60d | 0d |  | Cliente | 8h |

| ID | WBS | Task | Duration | Start | Finish | Predecessors | Total slack | Free slack | Resources | Work |
| --- | --- | --- | --- | --- | --- | --- | --- | --- | --- | --- |
| 86 | 1.3 | **Construção** | 70d | 2010-12-16 | 2011-03-25 |  | 0d |  |  | 2000h |
| 87 | 1.3.1 | **Acompanhamento Gerencial** | 1d | 2010-12-23 | 2010-12-23 |  | 70d |  |  | 8h |
| 88 | 1.3.1.1 | Refinamento dos Artefatos de Gerenciamento | 1d | 2010-12-23 | 2010-12-23 | 80 | 70d |  | GRP | 8h |
| 89 | 1.3.2 | **Especificação do sistema** | 11d | 2010-12-23 | 2011-01-10 |  | 60d |  |  | 88h |
| 90 | 1.3.2.1 | Refinamento da Especificação do Sistema | 1d | 2010-12-23 | 2010-12-23 | 80 | 70d |  | ANL1; GRP | 16h |
| 91 | 1.3.2.2 | Elaboração dos Scripts de Teste | 9d | 2010-12-28 | 2011-01-10 | 85 | 60d |  | QA | 72h |
| 92 | 1.3.3 | **Iteração** | 70d | 2010-12-16 | 2011-03-25 |  | 0d |  |  | 1904h |
| 93 | 1.3.3.1 | **MPE 2011** | 30d | 2010-12-16 | 2011-01-28 |  | 0d |  |  | 624h |
| 94 | 1.3.3.1.1 | **Módulo Página Principal** | 8d | 2010-12-16 | 2010-12-28 |  | 68d |  |  | 64h |
| 95 | 1.3.3.1.1.1 | Elaborar Página Principal | 2d | 2010-12-16 | 2010-12-17 | 43 | 68d | 0d | ANL2 | 16h |
| 96 | 1.3.3.1.1.2 | Elaborar Página Entrada | 1d | 2010-12-20 | 2010-12-20 | 95 | 68d | 0d | ANL2 | 8h |
| 97 | 1.3.3.1.1.3 | Elaborar Cadastro de Notícia | 1d | 2010-12-21 | 2010-12-21 | 96 | 68d | 0d | ANL2 | 8h |
| 98 | 1.3.3.1.1.4 | Elaborar Publicação de Arquivos | 2d | 2010-12-22 | 2010-12-23 | 97 | 68d | 0d | ANL2 | 16h |
| 99 | 1.3.3.1.1.5 | Elaborar Registro de Atendimento | 2d | 2010-12-27 | 2010-12-28 | 98 | 68d |  | ANL2 | 16h |
| 100 | 1.3.3.1.2 | **Módulo Controle de Acesso** | 4d | 2010-12-16 | 2010-12-21 |  | 66d |  |  | 32h |
| 101 | 1.3.3.1.2.1 | Elaborar Controle de Acesso | 4d | 2010-12-16 | 2010-12-21 | 43 | 66d | 0d | ANL1 | 32h |
| 102 | 1.3.3.1.3 | **Módulo Configuração** | 6d | 2010-12-22 | 2010-12-30 |  | 66d |  |  | 48h |
| 103 | 1.3.3.1.3.1 | Elaborar Configuração de Etapas | 3d | 2010-12-22 | 2010-12-27 | 101 | 66d | 0d | ANL1 | 24h |
| 104 | 1.3.3.1.3.2 | Elaborar Configuração de Grupos de Empresas | 3d | 2010-12-28 | 2010-12-30 | 103 | 66d |  | ANL1 | 24h |
| 105 | 1.3.3.1.4 | **Módulo Relatórios** | 8d | 2010-12-16 | 2010-12-28 |  | 0d |  |  | 72h |
| 106 | 1.3.3.1.4.1 | Relatório de Desempenho Global | 1d | 2010-12-16 | 2010-12-16 | 43 | 0d |  | ANL3 | 8h |
| 107 | 1.3.3.1.4.2 | Relatório Panorama das Respostas | 1d | 2010-12-17 | 2010-12-17 | 106 | 0d |  | ANL3 | 8h |
| 108 | 1.3.3.1.4.3 | Relatório Número de Participantes por Etapa | 3d | 2010-12-20 | 2010-12-22 | 107 | 0d |  | ANL3 | 24h |
| 109 | 1.3.3.1.4.4 | Relatório Relação de Participantes por Região – Escritório Regional | 2d | 2010-12-23 | 2010-12-24 | 108 | 0d |  | ANL3 | 16h |
| 110 | 1.3.3.1.4.5 | Relatório Origem das Inscrições | 1d | 2010-12-27 | 2010-12-27 | 109 | 0d |  | ANL3 | 8h |
| 111 | 1.3.3.1.4.6 | Relatório Empresas Inscritas/Candidatas por Digitador | 1d | 2010-12-28 | 2010-12-28 | 110 | 0d |  | ANL3 | 8h |

| ID | WBS | Task | Duration | Start | Finish | Predecessors | Total slack | Free slack | Resources | Work |
| --- | --- | --- | --- | --- | --- | --- | --- | --- | --- | --- |
| 112 | 1.3.3.1.5 | **Módulo Ranking** | 13d | 2010-12-16 | 2011-01-05 |  | 61d |  |  | 120h |
| 113 | 1.3.3.1.5.1 | **Estadual** | 7d | 2010-12-16 | 2010-12-27 |  | 61d |  |  | 64h |
| 114 | 1.3.3.1.5.1.1 | Selecionar Candidatas | 2d | 2010-12-16 | 2010-12-17 | 43 | 61d | 0d | ANL4 | 16h |
| 115 | 1.3.3.1.5.1.2 | Selecionar Classificadas | 2d | 2010-12-20 | 2010-12-21 | 114 | 61d | 0d | ANL4 | 16h |
| 116 | 1.3.3.1.5.1.3 | Selecionar Finalistas | 2d | 2010-12-22 | 2010-12-23 | 115 | 61d | 0d | ANL4 | 16h |
| 117 | 1.3.3.1.5.1.4 | Selecionar Finalistas Responsabilidade Social | 1d | 2010-12-24 | 2010-12-24 | 116 | 61d | 0d | ANL4 | 8h |
| 118 | 1.3.3.1.5.1.5 | Selecionar Finalistas Inovação | 1d | 2010-12-27 | 2010-12-27 | 117 | 62d | 0d | ANL4 | 8h |
| 119 | 1.3.3.1.5.2 | **Nacional** | 6d | 2010-12-28 | 2011-01-05 |  | 62d |  |  | 56h |
| 120 | 1.3.3.1.5.2.1 | Selecionar Candidatas | 2d | 2010-12-28 | 2010-12-29 | 118 | 62d | 0d | ANL4 | 16h |
| 121 | 1.3.3.1.5.2.2 | Selecionar Classificadas | 2d | 2010-12-30 | 2010-12-31 | 120 | 62d | 0d | ANL4 | 16h |
| 122 | 1.3.3.1.5.2.3 | Selecionar Finalistas | 1d | 2011-01-03 | 2011-01-03 | 121 | 63d | 0d | ANL4 | 8h |
| 123 | 1.3.3.1.5.2.4 | Selecionar Finalistas Responsabilidade Social | 1d | 2011-01-04 | 2011-01-04 | 122 | 63d | 0d | ANL4 | 8h |
| 124 | 1.3.3.1.5.2.5 | Selecionar Finalistas Inovação | 1d | 2011-01-05 | 2011-01-05 | 123 | 63d |  | ANL4 | 8h |
| 125 | 1.3.3.1.6 | **Módulo Avaliação** | 6d | 2010-12-29 | 2011-01-06 |  | 0d |  |  | 56h |
| 126 | 1.3.3.1.6.1 | **Etapa Estadual** | 4d | 2010-12-29 | 2011-01-04 |  | 0d |  |  | 40h |
| 127 | 1.3.3.1.6.1.1 | Registrar Resultado da Avaliação Estadual | 5d | 2010-12-29 | 2011-01-04 | 111 | 0d |  | ANL3 | 40h |
| 128 | 1.3.3.1.6.2 | **Etapa Nacional** | 2d | 2011-01-05 | 2011-01-06 |  | 0d |  |  | 16h |
| 129 | 1.3.3.1.6.2.1 | Registrar Resultado da Avaliação Nacional | 2d | 2011-01-05 | 2011-01-06 | 127 | 0d |  | ANL3 | 16h |
| 130 | 1.3.3.1.7 | Instalação em ambiente de Homologação | 2d | 2011-01-07 | 2011-01-10 | 129 | 41d | 0d | ANL1 | 16h |
| 131 | 1.3.3.1.8 | Realização de Testes e Correção de Bugs | 13d | 2011-01-11 | 2011-01-27 | 130 | 41d | 0d | QA; ANL1 | 208h |
| 132 | 1.3.3.1.9 | Aceite da Fase de Construção | 1d | 2011-01-28 | 2011-01-28 | 131 | 41d | 0d | Cliente | 8h |
| 133 | 1.3.3.2 | **FGA 2011** | 30d | 2010-12-16 | 2011-01-28 |  | 44d |  |  | 368h |
| 134 | 1.3.3.2.1 | **Módulo Página Principal** | 6d | 2010-12-16 | 2010-12-23 |  | 57d |  |  | 48h |
| 135 | 1.3.3.2.1.1 | Elaborar Página Principal | 2d | 2010-12-16 | 2010-12-17 | 49FS+1d | 57d | 0d | ANL5 | 16h |
| 136 | 1.3.3.2.1.2 | Elaborar Página Entrada | 1d | 2010-12-20 | 2010-12-20 | 135 | 57d | 0d | ANL5 | 8h |
| 137 | 1.3.3.2.1.3 | Elaborar Cadastro de Notícia | 1d | 2010-12-21 | 2010-12-21 | 136 | 57d | 0d | ANL5 | 8h |
| 138 | 1.3.3.2.1.4 | Elaborar Publicação de Arquivos | 1d | 2010-12-22 | 2010-12-22 | 137 | 57d | 0d | ANL5 | 8h |
| 139 | 1.3.3.2.1.5 | Elaborar Registro de Atendimento | 1d | 2010-12-23 | 2010-12-23 | 138 | 57d | 0d | ANL5 | 8h |

| ID | WBS | Task | Duration | Start | Finish | Predecessors | Total slack | Free slack | Resources | Work |
| --- | --- | --- | --- | --- | --- | --- | --- | --- | --- | --- |
| 140 | 1.3.3.2.2 | **Módulo Controle de Acesso** | 2d | 2011-01-05 | 2011-01-06 |  | 32d |  |  | 16h |
| 141 | 1.3.3.2.2.1 | Elaborar Controle de Acesso | 2d | 2011-01-05 | 2011-01-06 | 54 | 32d | 0d | ANL6 | 16h |
| 142 | 1.3.3.2.3 | **Módulo Configuração** | 5d | 2011-01-07 | 2011-01-13 |  | 32d |  |  | 40h |
| 143 | 1.3.3.2.3.1 | Elaborar Configuração de Etapas | 5d | 2011-01-07 | 2011-01-13 | 141 | 32d | 0d | ANL6 | 40h |
| 144 | 1.3.3.2.4 | **Módulo Relatórios** | 3d | 2010-12-24 | 2010-12-29 |  | 57d |  |  | 24h |
| 145 | 1.3.3.2.4.1 | Relatório de Desempenho Global | 1d | 2010-12-24 | 2010-12-24 | 139 | 57d | 0d | ANL5 | 8h |
| 146 | 1.3.3.2.4.2 | Relatório Panorama das Respostas | 1d | 2010-12-28 | 2010-12-28 | 145FS+1d | 58d | 0d | ANL5 | 8h |
| 147 | 1.3.3.2.4.3 | Relatório Número de Participantes por Etapa | 1d | 2010-12-29 | 2010-12-29 | 146 | 58d | 0d | ANL5 | 8h |
| 148 | 1.3.3.2.5 | **Módulo Seleção** | 5d | 2010-12-30 | 2011-01-06 |  | 58d |  |  | 48h |
| 149 | 1.3.3.2.5.1 | Selecionar Candidatas | 2d | 2010-12-30 | 2010-12-31 | 147 | 58d | 0d | ANL5 | 16h |
| 150 | 1.3.3.2.5.2 | Selecionar Pré-Classificadas | 2d | 2011-01-03 | 2011-01-04 | 149 | 59d | 0d | ANL5 | 16h |
| 151 | 1.3.3.2.5.3 | Selecionar Fase 4 | 2d | 2011-01-05 | 2011-01-06 | 150 | 59d | 0d | ANL5 | 16h |
| 152 | 1.3.3.2.6 | **Módulo Avaliação** | 2d | 2011-01-07 | 2011-01-10 |  | 59d |  |  | 16h |
| 153 | 1.3.3.2.6.1 | Registrar Resultado Avaliação | 1d | 2011-01-07 | 2011-01-07 | 151 | 59d | 0d | ANL5 | 8h |
| 154 | 1.3.3.2.6.2 | Registrar Resultado Avaliação Final | 1d | 2011-01-10 | 2011-01-10 | 153 | 59d | 0d | ANL5 | 8h |
| 155 | 1.3.3.2.7 | Instalação em ambiente de Homologação | 1d | 2011-01-11 | 2011-01-11 | 154 | 59d |  | ANL5 | 8h |
| 156 | 1.3.3.2.8 | Realização de Testes e Correção de Bugs | 10d | 2011-01-14 | 2011-01-27 | 143 | 46d | 0d | QA; ANL5 | 160h |
| 157 | 1.3.3.2.9 | Aceite da Fase de Construção | 1d | 2011-01-28 | 2011-01-28 | 156 | 46d |  | Cliente | 8h |
| 158 | 1.3.3.3 | **PSMN 2011** | 26d | 2011-01-07 | 2011-02-11 |  | 0d |  |  | 400h |
| 159 | 1.3.3.3.1 | **Módulo Página Principal** | 6d | 2011-01-07 | 2011-01-14 |  | 54d |  |  | 48h |
| 160 | 1.3.3.3.1.1 | Elaborar Página Principal | 2d | 2011-01-07 | 2011-01-10 | 61 | 54d | 0d | ANL4 | 16h |
| 161 | 1.3.3.3.1.2 | Elaborar Página Entrada | 1d | 2011-01-11 | 2011-01-11 | 160 | 54d | 0d | ANL4 | 8h |
| 162 | 1.3.3.3.1.3 | Elaborar Cadastro de Notícia | 1d | 2011-01-12 | 2011-01-12 | 161 | 54d | 0d | ANL4 | 8h |
| 163 | 1.3.3.3.1.4 | Elaborar Publicação de Arquivos | 1d | 2011-01-13 | 2011-01-13 | 162 | 54d | 0d | ANL4 | 8h |
| 164 | 1.3.3.3.1.5 | Elaborar Registro de Atendimento | 1d | 2011-01-14 | 2011-01-14 | 163 | 54d | 0d | ANL4 | 8h |

| ID | WBS | Task | Duration | Start | Finish | Predecessors | Total slack | Free slack | Resources | Work |
| --- | --- | --- | --- | --- | --- | --- | --- | --- | --- | --- |
| 165 | 1.3.3.3.2 | **Módulo Controle de Acesso** | 2d | 2011-01-17 | 2011-01-18 |  | 54d |  |  | 16h |
| 166 | 1.3.3.3.2.1 | Elaborar Controle de Acesso | 2d | 2011-01-17 | 2011-01-18 | 164 | 54d |  | ANL4 | 16h |
| 167 | 1.3.3.3.3 | **Módulo Relatórios** | 10d | 2011-01-07 | 2011-01-20 |  | 0d |  |  | 80h |
| 168 | 1.3.3.3.3.1 | Relatório de Avaliações | 2d | 2011-01-07 | 2011-01-10 | 129 | 0d |  | ANL3 | 16h |
| 169 | 1.3.3.3.3.2 | Relatório para a Comissão Julgadora | 2d | 2011-01-11 | 2011-01-12 | 168 | 0d |  | ANL3 | 16h |
| 170 | 1.3.3.3.3.3 | Relatório Qualitativo | 3d | 2011-01-13 | 2011-01-17 | 169 | 0d |  | ANL3 | 24h |
| 171 | 1.3.3.3.3.4 | Relatório Quantitativo | 3d | 2011-01-18 | 2011-01-20 | 170 | 0d |  | ANL3 | 24h |
| 172 | 1.3.3.3.4 | **Módulo Seleção** | 11d | 2011-01-07 | 2011-01-21 |  | 7d |  |  | 88h |
| 173 | 1.3.3.3.4.1 | **Seleção Estadual** | 8d | 2011-01-07 | 2011-01-18 |  | 7d |  |  | 64h |
| 174 | 1.3.3.3.4.1.1 | Selecionar Avaliador | 3d | 2011-01-07 | 2011-01-11 | 61 | 7d | 0d | ANL2 | 24h |
| 175 | 1.3.3.3.4.1.2 | Selecionar Verificador | 3d | 2011-01-12 | 2011-01-14 | 174 | 7d | 0d | ANL2 | 24h |
| 176 | 1.3.3.3.4.1.3 | Selecionar Ranking | 2d | 2011-01-17 | 2011-01-18 | 175 | 7d | 0d | ANL2 | 16h |
| 177 | 1.3.3.3.4.2 | **Seleção Regional** | 2d | 2011-01-19 | 2011-01-20 |  | 7d |  |  | 16h |
| 178 | 1.3.3.3.4.2.1 | Selecionar Avaliador | 1d | 2011-01-19 | 2011-01-19 | 176 | 7d | 0d | ANL2 | 8h |
| 179 | 1.3.3.3.4.2.2 | Selecionar Ranking | 1d | 2011-01-20 | 2011-01-20 | 178 | 7d | 0d | ANL2 | 8h |
| 180 | 1.3.3.3.4.3 | **Seleção Nacional** | 1d | 2011-01-21 | 2011-01-21 |  | 7d |  |  | 8h |
| 181 | 1.3.3.3.4.3.1 | Selecionar Ranking | 1d | 2011-01-21 | 2011-01-21 | 179 | 7d | 0d | ANL2 | 8h |
| 182 | 1.3.3.3.5 | **Módulo Avaliação** | 10d | 2011-01-14 | 2011-01-27 |  | 32d |  |  | 80h |
| 183 | 1.3.3.3.5.1 | Efetuar Avaliação Estadual | 4d | 2011-01-14 | 2011-01-19 | 143 | 32d | 0d | ANL6 | 32h |
| 184 | 1.3.3.3.5.2 | Efetuar Verificação Estadual | 3d | 2011-01-20 | 2011-01-24 | 183 | 32d | 0d | ANL6 | 24h |
| 185 | 1.3.3.3.5.3 | Efetuar Avaliação Regional | 3d | 2011-01-25 | 2011-01-27 | 184 | 32d | 0d | ANL6 | 24h |
| 186 | 1.3.3.3.6 | Instalação em ambiente de Homologação | 1d | 2011-01-28 | 2011-01-28 | 185 | 32d | 0d | ANL4 | 8h |
| 187 | 1.3.3.3.7 | Realização de Testes e Correção de Bugs | 9d | 2011-01-31 | 2011-02-10 | 186 | 32d | 0d | QA, ANL4 | 72h |
| 188 | 1.3.3.3.8 | Aceite da Fase de Construção | 1d | 2011-02-11 | 2011-02-11 | 187 | 32d | 0d | Cliente | 8h |

| ID | WBS | Task | Duration | Start | Finish | Predecessors | Total slack | Free slack | Resources | Work |
| --- | --- | --- | --- | --- | --- | --- | --- | --- | --- | --- |
| 189 | 1.3.3.4 | **PEG 2011** | 26d | 2011-02-18 | 2011-03-25 |  | 5d |  |  | 448h |
| 190 | 1.3.3.4.1 | **Módulo Página Principal** | 6d | 2011-02-18 | 2011-02-25 |  | 7d |  |  | 48h |
| 191 | 1.3.3.4.1.1 | Elaborar Página Principal | 2d | 2011-02-18 | 2011-02-21 | 67 | 7d | 0d | ANL2 | 16h |
| 192 | 1.3.3.4.1.2 | Elaborar Página Entrada | 1d | 2011-02-22 | 2011-02-22 | 191 | 7d | 0d | ANL2 | 8h |
| 193 | 1.3.3.4.1.3 | Elaborar Cadastro de Notícia | 1d | 2011-02-23 | 2011-02-23 | 192 | 7d | 0d | ANL2 | 8h |
| 194 | 1.3.3.4.1.4 | Elaborar Publicação de Arquivos | 1d | 2011-02-24 | 2011-02-24 | 193 | 7d | 0d | ANL2 | 8h |
| 195 | 1.3.3.4.1.5 | Elaborar Registro de Atendimento | 1d | 2011-02-25 | 2011-02-25 | 194 | 7d | 0d | ANL2 | 8h |
| 196 | 1.3.3.4.2 | **Módulo Controle de Acesso** | 2d | 2011-02-28 | 2011-03-01 |  | 7d |  |  | 16h |
| 197 | 1.3.3.4.2.1 | Elaborar Controle de Acesso | 2d | 2011-02-28 | 2011-03-01 | 195 | 7d | 0d | ANL2 | 16h |
| 198 | 1.3.3.4.3 | **Módulo Configuração** | 9d | 2011-03-02 | 2011-03-14 |  | 7d |  |  | 72h |
| 199 | 1.3.3.4.3.1 | Elaborar Configuração de Etapas | 7d | 2011-03-02 | 2011-03-10 | 197 | 7d | 0d | ANL2 | 56h |
| 200 | 1.3.3.4.3.2 | Elaborar Configuração Grupo de Empresas | 2d | 2011-03-11 | 2011-03-14 | 199 | 7d | 0d | ANL2 | 16h |
| 201 | 1.3.3.4.4 | **Módulo Relatórios** | 6d | 2011-02-25 | 2011-03-04 |  | 0d |  |  | 48h |
| 202 | 1.3.3.4.4.1 | Relatório de Desempenho Global | 2d | 2011-02-25 | 2011-02-28 | 72 | 0d |  | ANL3 | 16h |
| 203 | 1.3.3.4.4.2 | Relatório Panorama das Respostas | 2d | 2011-03-01 | 2011-03-02 | 202 | 0d |  | ANL3 | 16h |
| 204 | 1.3.3.4.4.3 | Relatório Número de Participantes por Etapa | 2d | 2011-03-03 | 2011-03-04 | 203 | 0d |  | ANL3 | 16h |
| 205 | 1.3.3.4.5 | **Módulo Seleção** | 8d | 2011-03-15 | 2011-03-24 |  | 7d |  |  | 64h |
| 206 | 1.3.3.4.5.1 | Selecionar Candidatas | 1d | 2011-03-15 | 2011-03-15 | 200 | 7d | 0d | ANL2 | 8h |
| 207 | 1.3.3.4.5.2 | Selecionar Pré-Classificadas | 1d | 2011-03-16 | 2011-03-16 | 206 | 7d | 0d | ANL2 | 8h |
| 208 | 1.3.3.4.5.3 | Selecionar Fase 2 | 2d | 2011-03-17 | 2011-03-18 | 207 | 7d | 0d | ANL2 | 16h |
| 209 | 1.3.3.4.5.4 | Selecionar Fase 3 | 2d | 2011-03-21 | 2011-03-22 | 208 | 7d | 0d | ANL2 | 16h |
| 210 | 1.3.3.4.5.5 | Selecionar Fase 4 | 2d | 2011-03-23 | 2011-03-24 | 209 | 7d |  | ANL2 | 16h |
| 211 | 1.3.3.4.6 | **Módulo Avaliação** | 3d | 2011-03-07 | 2011-03-09 |  | 0d |  |  | 24h |
| 212 | 1.3.3.4.6.1 | Registrar Resultado Avaliação Fase 1 | 2d | 2011-03-07 | 2011-03-08 | 204 | 0d |  | ANL3 | 16h |
| 213 | 1.3.3.4.6.2 | Registrar Resultado Avaliação Final Fase 4 | 1d | 2011-03-09 | 2011-03-09 | 212 | 0d |  | ANL3 | 8h |
| 214 | 1.3.3.4.7 | Instalação em ambiente de Homologação | 1d | 2011-03-10 | 2011-03-10 | 213 | 0d |  | ANL2 | 8h |
| 215 | 1.3.3.4.8 | Realização de Testes e Correção de Bugs | 10d | 2011-03-11 | 2011-03-24 | 214 | 0d |  | QA; ANL2 | 160h |
| 216 | 1.3.3.4.9 | Aceite da Fase de Construção | 1d | 2011-03-25 | 2011-03-25 | 215 | 0d |  | Cliente | 8h |

| ID | WBS | Task | Type | Duration | Start | Finish | Predecessors | Total slack | Free slack | Resources | Work |
| --- | --- | --- | --- | --- | --- | --- | --- | --- | --- | --- | --- |
| 217 | 1.3.3.5 | **SIAC WEB** |  | 8d | 2011-02-21 | 2011-03-02 |  | 23d |  |  | 64h |
| 218 | 1.3.3.5.1 | Finalizar mecanismo de sincronismo (4 Sistemas) |  | 3d | 2011-02-21 | 2011-02-23 | 75 | 23d | 0d | ANL1 | 24h |
| 219 | 1.3.3.5.2 | Finalizar mecanismo de integração com SIAC Web |  | 5d | 2011-02-24 | 2011-03-02 | 218 | 23d |  | ANL1 | 40h |
| 220 | 1.4 | **Implantação** |  | 47d | 2011-01-28 | 2011-04-04 |  | 0d |  |  | 232h |
| 221 | 1.4.1 | **Atividades de Implantação** |  | 45d | 2011-01-28 | 2011-03-31 |  | 2d |  |  | 224h |
| 222 | 1.4.1.1 | **Testes Integrados - Cenários de Teste e Correção de Bugs** |  | 45d | 2011-01-28 | 2011-03-31 |  | 2d |  |  | 224h |
| 223 | 1.4.1.1.1 | Liberação do ambiente de Produção | milestone | 0d | 2011-01-28 | 2011-01-28 | 225FS-2d | 47d |  | INFRA FNQ |  |
| 224 | 1.4.1.1.2 | **MPE 2011** |  | 5d | 2011-01-31 | 2011-02-04 |  | 41d |  |  | 64h |
| 225 | 1.4.1.1.2.1 | Instalação em ambiente de Produção |  | 1d | 2011-01-31 | 2011-01-31 | 132 | 41d | 0d | ANL1 | 8h |
| 226 | 1.4.1.1.2.2 | Realização de Testes e Correção de Bugs |  | 3d | 2011-02-01 | 2011-02-03 | 225 | 41d | 0d | QA; ANL1 | 48h |
| 227 | 1.4.1.1.2.3 | Aceite Final |  | 1d | 2011-02-04 | 2011-02-04 | 226 | 41d |  | Cliente | 8h |
| 228 | 1.4.1.1.3 | **FGA 2011** |  | 5d | 2011-01-31 | 2011-02-04 |  | 41d |  |  | 64h |
| 229 | 1.4.1.1.3.1 | Instalação em ambiente de Produção |  | 1d | 2011-01-31 | 2011-01-31 | 225FS-1d | 41d | 0d | ANL5 | 8h |
| 230 | 1.4.1.1.3.2 | Realização de Testes e Correção de Bugs |  | 3d | 2011-02-01 | 2011-02-03 | 229 | 41d | 0d | QA; ANL5 | 48h |
| 231 | 1.4.1.1.3.3 | Aceite Final |  | 1d | 2011-02-04 | 2011-02-04 | 230 | 41d |  | Cliente | 8h |
| 232 | 1.4.1.1.4 | **PSMN 2011** |  | 4d | 2011-02-14 | 2011-02-17 |  | 32d |  |  | 48h |
| 233 | 1.4.1.1.4.1 | Instalação em Produção |  | 1d | 2011-02-14 | 2011-02-14 | 188 | 32d | 0d | ANL4 | 8h |
| 234 | 1.4.1.1.4.2 | Realização de Testes e Correção de Bugs |  | 2d | 2011-02-15 | 2011-02-16 | 233 | 32d | 0d | ANL4; QA | 32h |
| 235 | 1.4.1.1.4.3 | Aceite Final |  | 1d | 2011-02-17 | 2011-02-17 | 234 | 32d |  | Cliente | 8h |
| 236 | 1.4.1.1.5 | **PEG 2011** |  | 4d | 2011-03-28 | 2011-03-31 |  | 0d |  |  | 48h |
| 237 | 1.4.1.1.5.1 | Instalação em Produção |  | 1d | 2011-03-28 | 2011-03-28 | 216 | 0d |  | ANL3 | 8h |
| 238 | 1.4.1.1.5.2 | Realização de Testes e Correção de Bugs |  | 2d | 2011-03-29 | 2011-03-30 | 237 | 0d |  | QA; ANL3 | 32h |
| 239 | 1.4.1.1.5.3 | Aceite Final |  | 1d | 2011-03-31 | 2011-03-31 | 238 | 0d |  | Cliente | 8h |
| 240 | 1.4.2 | Aceite Final do Cliente |  | 1d | 2011-04-01 | 2011-04-01 | 239 | 0d |  | Cliente | 8h |
| 241 | 1.4.3 | Reunião de Encerrameto |  | 1d | 2011-04-04 | 2011-04-04 | 240 | 0d |  |  |  |
| 242 | 1.4.4 | Go-Live & Suporte | milestone | 0d | 2011-04-04 | 2011-04-04 | 241 | 0d |  |  |  |
